# BS Beauty Academy

Schedule from ProjectLibre, 2025-03-18 to 2025-06-24, 1 hours a day.

## Calendars

- Padrão: Mon-Fri 08:00-09:00; Sat-Sun off.

## Resources

| Resource | Rate |
| --- | --- |
| Não atribuído |  |
| Sumário |  |
| Recursos Humanos |  |
| Gestão |  |
| Alyson | 75 |
| Desenvolvimento |  |
| Bruno | 31.25 |
| Eliel | 31.25 |
| Henrique | 31.25 |
| Henrriky | 93.75 |
| Documentação |  |
| Giovanna | 18.75 |
| Recursos Materiais |  |
| Computador |  |

## Schedule

| ID | WBS | Task | Duration | Start | Finish | Predecessors | Complete | Constraint | Resources |
| --- | --- | --- | --- | --- | --- | --- | --- | --- | --- |
| 1 | 1 | **Sistema para Gerenciamento de Salão de Beleza** | 70d | 2025-03-18 | 2025-06-24 |  | 34% |  |  |
| 2 | 1.1 | Início do Projeto | 0d | 2025-03-18 | 2025-03-18 |  |  | start no earlier than 2025-03-18 |  |
| 4 | 1.2 | **Etapa 1: Definição do Tema** | 16d | 2025-03-18 | 2025-04-08 | 2SS | 100% | start no earlier than 2025-03-18 |  |
| 5 | 1.2.1 | Definição da equipe | 2d | 2025-03-18 | 2025-03-19 |  | 100% |  | Alyson |
| 6 | 1.2.2 | Busca da entidade parceira | 2d | 2025-03-20 | 2025-03-21 | 5 | 100% |  | Henrriky |
| 7 | 1.2.3 | Entrevista e alinhamento com entidade parceira | 6d | 2025-03-24 | 2025-03-31 | 6 | 100% |  | Alyson [50%]; Henrriky [50%] |
| 8 | 1.2.4 | Elaboração e apresentação do tema | 5d | 2025-04-01 | 2025-04-07 | 7 | 100% |  | Alyson [16.67%]; Bruno [16.67%]; Eliel [16.67%]; Henrique [16.67%]; Henrriky [16.67%]; Giovanna [16.67%] |
| 9 | 1.2.5 | Aprovação do Tema | 0d | 2025-04-08 | 2025-04-08 | 8, 10 |  | start no earlier than 2025-04-08 |  |
| 10 | 1.2.6 | Preenchimento da 1ª tabela de autoavaliação | 15d | 2025-03-18 | 2025-04-07 |  | 100% |  | Alyson [16.67%]; Bruno [16.67%]; Eliel [16.67%]; Henrique [16.67%]; Henrriky [16.67%]; Giovanna [16.67%] |
| 12 | 1.3 | **Etapa 2: Desenho da Aplicação** | 15d | 2025-04-09 | 2025-04-29 | 9SS | 100% |  |  |
| 13 | 1.3.1 | **Elicitação de Requisitos** | 15d | 2025-04-09 | 2025-04-29 |  | 100% |  |  |
| 14 | 1.3.1.1 | Levantamento das regras de negócio | 7d | 2025-04-09 | 2025-04-17 |  | 100% |  | Alyson |
| 15 | 1.3.1.2 | Análise de requisitos | 4d | 2025-04-18 | 2025-04-23 | 14 | 100% |  | Bruno [50%]; Eliel [50%] |
| 16 | 1.3.1.3 | Formalização dos requisitos | 2d | 2025-04-24 | 2025-04-25 | 15 | 100% |  | Alyson [50%]; Bruno [50%] |
| 17 | 1.3.1.4 | Validação dos requisitos | 2d | 2025-04-28 | 2025-04-29 | 16 | 100% |  | Henrriky |
| 18 | 1.3.2 | **Confecção de Diagramas** | 14d | 2025-04-09 | 2025-04-29 |  | 100% |  |  |
| 19 | 1.3.2.1 | Estudo de diagramas | 7d | 2025-04-09 | 2025-04-17 |  | 100% |  | Henrriky [50%]; Henrique [50%] |
| 20 | 1.3.2.2 | Criação do diagrama de componentes | 7d | 2025-04-18 | 2025-04-28 | 19 | 100% |  | Henrique [50%]; Henrriky [50%] |
| 21 | 1.3.2.3 | Criação do diagrama de implantação | 7d | 2025-04-18 | 2025-04-28 | 19 | 100% |  | Henrique [50%]; Henrriky [50%] |
| 22 | 1.3.2.4 | Elaboração e preparação para apresentação dos diagramas | 6d | 2025-04-21 | 2025-04-28 | 20SS, 21SS | 100% | as late as possible | Alyson [33.33%]; Henrique [33.33%]; Henrriky [33.33%] |
| 23 | 1.3.2.5 | Entrega do Desenho da Aplicação | 0d | 2025-04-29 | 2025-04-29 | 22, 24 |  | must finish on 2025-04-29 |  |
| 24 | 1.3.3 | Preenchimento da 2ª tabela de autoavaliação | 14d | 2025-04-09 | 2025-04-28 |  | 100% | as late as possible | Alyson [16.67%]; Bruno [16.67%]; Eliel [16.67%]; Henrique [16.67%]; Henrriky [16.67%]; Giovanna [16.67%] |
| 26 | 1.4 | **Etapa 3: Estudo de Plataformas e Tecnologias** | 29d | 2025-04-09 | 2025-05-20 | 9SS, 13SS | 100% |  |  |
| 27 | 1.4.1 | Levantamento de requisitos técnicos | 4d | 2025-04-09 | 2025-04-14 |  | 100% |  | Henrriky |
| 28 | 1.4.2 | Definição da arquitetura do sistema | 3d | 2025-04-15 | 2025-04-17 | 27 | 100% |  | Henrique |
| 29 | 1.4.3 | Análise de tecnologias backend | 7d | 2025-04-18 | 2025-04-28 | 28 | 100% |  | Bruno [50%]; Eliel [50%] |
| 30 | 1.4.4 | Análise de tecnologias frontend | 7d | 2025-04-18 | 2025-04-28 | 28 | 100% |  | Bruno [50%]; Eliel [50%] |
| 31 | 1.4.5 | Análise de banco de dados | 7d | 2025-04-18 | 2025-04-28 | 28 | 100% |  | Eliel [50%]; Henrique [50%] |
| 32 | 1.4.6 | Definição de tecnologias e ferramentas de desenvolvimento | 4d | 2025-04-29 | 2025-05-02 | 29, 30, 31 | 100% |  | Alyson [25%]; Bruno [25%]; Eliel [25%]; Henrique [25%] |
| 33 | 1.4.7 | Pesquisa sobre APIs e serviços de terceiros | 10d | 2025-04-15 | 2025-04-28 | 27 | 100% |  | Henrique [50%]; Henrriky [50%] |
| 34 | 1.4.8 | Estudo de plataformas de hospedagem e deploy | 10d | 2025-04-15 | 2025-04-28 | 27 | 100% |  | Henrique [50%]; Henrriky [50%] |
| 35 | 1.4.9 | Validação das plataformas e tecnologias | 3d | 2025-05-05 | 2025-05-07 | 32, 33, 34 | 100% |  | Henrriky |
| 36 | 1.4.10 | Preparação para a prova de conceito | 7d | 2025-05-08 | 2025-05-16 | 35 | 100% |  | Henrique [50%]; Henrriky [50%] |
| 37 | 1.4.11 | Prova de Conceito | 0d | 2025-05-20 | 2025-05-20 | 23, 36, 38 |  | must finish on 2025-05-20 |  |
| 38 | 1.4.12 | Preenchimento da 3ª tabela de autoavaliação | 15d | 2025-04-29 | 2025-05-19 |  | 100% | as late as possible | Alyson [16.67%]; Bruno [16.67%]; Eliel [16.67%]; Henrique [16.67%]; Henrriky [16.67%]; Giovanna [16.67%] |

| ID | WBS | Task | Duration | Start | Finish | Predecessors |
| --- | --- | --- | --- | --- | --- | --- |
| 40 | 1.5 | **Etapa 4: Desenvolvimento de Software** | 54d | 2025-04-09 | 2025-06-24 | 9SS, 13SS, 26SS |
| 41 | 1.5.1 | **Modelagem do Banco de Dados** | 15d | 2025-04-09 | 2025-04-29 |  |
| 42 | 1.5.1.1 | Levantamento das entidades principais | 5d | 2025-04-09 | 2025-04-15 |  |
| 43 | 1.5.1.2 | Definição dos relacionamentos entre entidades | 3d | 2025-04-16 | 2025-04-18 | 42 |
| 44 | 1.5.1.3 | Criação do modelo lógico | 3d | 2025-04-21 | 2025-04-23 | 43 |
| 45 | 1.5.1.4 | Transformação para modelo físico | 2d | 2025-04-24 | 2025-04-25 | 44 |
| 46 | 1.5.1.5 | Criação do schema no Prisma ORM | 2d | 2025-04-28 | 2025-04-29 | 45 |
| 47 | 1.5.2 | **Implementação do Back-End** | 22d | 2025-04-30 | 2025-05-29 | 46 |
| 48 | 1.5.2.1 | Configuração inicial do projeto | 2d | 2025-04-30 | 2025-05-01 |  |
| 49 | 1.5.2.2 | Implementação de autenticação com Google OAuth API | 10d | 2025-05-02 | 2025-05-15 | 48 |
| 50 | 1.5.2.3 | **Desenvolvimento de CRUDs** | 16d | 2025-05-02 | 2025-05-23 | 48 |
| 51 | 1.5.2.3.1 | Implementação do CRUD de cliente | 4d | 2025-05-02 | 2025-05-07 |  |
| 52 | 1.5.2.3.2 | Implementação do CRUD de funcionária | 4d | 2025-05-02 | 2025-05-07 |  |
| 53 | 1.5.2.3.3 | Implementação do CRUD de turno | 4d | 2025-05-08 | 2025-05-13 | 52 |
| 54 | 1.5.2.3.4 | Implementação do CRUD de serviço | 4d | 2025-05-02 | 2025-05-07 |  |
| 55 | 1.5.2.3.5 | Implementação do CRUD de oferta | 4d | 2025-05-14 | 2025-05-19 | 52, 53, 54 |
| 56 | 1.5.2.3.6 | Implementação do CRUD de agendamento | 4d | 2025-05-20 | 2025-05-23 | 51, 55 |
| 57 | 1.5.2.4 | Criação de endpoints da API REST | 4d | 2025-05-26 | 2025-05-29 | 50, 49 |
| 58 | 1.5.3 | **Implementação do Front-End** | 29d | 2025-04-30 | 2025-06-09 | 47SS |
| 59 | 1.5.3.1 | Configuração inicial do projeto frontend | 2d | 2025-04-30 | 2025-05-01 |  |
| 60 | 1.5.3.2 | Criação do design de telas | 10d | 2025-04-30 | 2025-05-13 |  |
| 61 | 1.5.3.3 | **Desenvolvimento de Telas** | 10d | 2025-05-14 | 2025-05-27 | 59, 60 |
| 62 | 1.5.3.3.1 | Implementação da interface de login/cadastro | 10d | 2025-05-14 | 2025-05-27 |  |
| 63 | 1.5.3.3.2 | Implementação da tela de visualização de serviços | 10d | 2025-05-14 | 2025-05-27 |  |
| 64 | 1.5.3.3.3 | Implementação da tela de agendamento | 10d | 2025-05-14 | 2025-05-27 |  |
| 65 | 1.5.3.3.4 | Implementação da tela de criação de serviços | 10d | 2025-05-14 | 2025-05-27 |  |
| 66 | 1.5.3.3.5 | Implementação da tela de turnos | 10d | 2025-05-14 | 2025-05-27 |  |
| 67 | 1.5.3.3.6 | Implementação da tela inicial | 10d | 2025-05-14 | 2025-05-27 |  |
| 68 | 1.5.3.4 | Integração com a API do backend | 7d | 2025-05-30 | 2025-06-09 | 57, 61 |

| ID | WBS | Task | Duration | Start | Finish | Predecessors | Complete | Constraint | Resources |
| --- | --- | --- | --- | --- | --- | --- | --- | --- | --- |
| 69 | 1.5.4 | **Deploy** | 10d | 2025-06-10 | 2025-06-23 | 47, 58 |  |  |  |
| 70 | 1.5.4.1 | Configuração de instâncias EC2 | 3d | 2025-06-10 | 2025-06-12 |  |  |  |  |
| 71 | 1.5.4.2 | Configuração de armazenamento e banco de dados | 3d | 2025-06-13 | 2025-06-17 | 70 |  |  |  |
| 72 | 1.5.4.3 | Configuração e deploy da aplicação | 4d | 2025-06-18 | 2025-06-23 | 71 |  |  |  |
| 73 | 1.5.5 | Apresentação do MVP | 0d | 2025-06-24 | 2025-06-24 | 69 |  | must finish on 2025-06-24 |  |
| 75 | 1.6 | **Etapa 5: Documentação** | 70d | 2025-03-18 | 2025-06-24 | 2SS | 5% |  |  |
| 76 | 1.6.1 | Produção do projectlibre | 69d | 2025-03-18 | 2025-06-20 |  | 40% |  | Alyson |
| 77 | 1.6.2 | Produção do "Diário de Bordo" do projeto | 69d | 2025-03-18 | 2025-06-20 |  | 30% |  | Giovanna [10%] |
| 78 | 1.6.3 | Criação do repositório remoto no GitHub | 2d | 2025-03-18 | 2025-03-19 |  | 100% |  | Henrriky |
| 79 | 1.6.4 | Definição de padronização para arquivos e diretórios da documentação | 2d | 2025-03-20 | 2025-03-21 | 78 | 100% |  | Giovanna [50%]; Alyson [50%] |
| 80 | 1.6.5 | **Tópicos da Documentação** | 65d | 2025-03-24 | 2025-06-20 | 79 |  |  |  |
| 81 | 1.6.5.1 | Produção do tópico "Introdução" | 65d | 2025-03-24 | 2025-06-20 | 6SS |  |  | Giovanna [10%] |
| 82 | 1.6.5.2 | Produção do tópico "Revisão da Literatura" | 59d | 2025-04-01 | 2025-06-20 | 8SS |  |  | Giovanna [10%] |
| 83 | 1.6.5.3 | Produção do tópico "Gestão do Projeto" | 65d | 2025-03-24 | 2025-06-20 | 5SS |  |  | Alyson [10%] |
| 84 | 1.6.5.4 | **Desenvolvimento do Projeto** | 52d | 2025-04-10 | 2025-06-20 | 12SS, 26SS, 40SS |  | start no earlier than 2025-04-10 |  |
| 85 | 1.6.5.4.1 | Produção do tópico "Escopo do Projeto" | 52d | 2025-04-10 | 2025-06-20 | 13SS |  |  | Bruno [10%] |
| 86 | 1.6.5.4.2 | Produção do tópico "Histórias de Usuários" | 52d | 2025-04-10 | 2025-06-20 | 13SS |  |  | Bruno [10%] |
| 87 | 1.6.5.4.3 | Produção do tópico "Arquitetura" | 52d | 2025-04-10 | 2025-06-20 | 18SS |  |  | Henrriky [10%] |
| 88 | 1.6.5.4.4 | Produção do tópico "Tecnologias" | 52d | 2025-04-10 | 2025-06-20 | 26SS |  |  | Henrriky [10%] |
| 89 | 1.6.5.4.5 | Produção do tópico "Testes e Manutenibildade" | 52d | 2025-04-10 | 2025-06-20 | 40SS |  |  | Henrique [10%] |
| 90 | 1.6.5.4.6 | Produção do tópico "Segurança, Privacidade e Legislação" | 52d | 2025-04-10 | 2025-06-20 | 40SS |  |  | Eliel [10%] |
| 91 | 1.6.5.4.7 | Produção do tópico "Modelo de Banco de Dados" | 52d | 2025-04-10 | 2025-06-20 | 40SS |  |  | Eliel [10%] |
| 92 | 1.6.5.4.8 | Produção do tópico "Duração / Cronograma" | 52d | 2025-04-10 | 2025-06-20 |  |  |  | Henrique [10%] |
| 93 | 1.6.5.4.9 | Produção do tópico "Viabilidade Financeira" | 52d | 2025-04-10 | 2025-06-20 | 26SS |  |  | Alyson [10%] |
| 94 | 1.6.5.5 | Produção do tópico "Considerações Finais" | 65d | 2025-03-24 | 2025-06-20 |  |  |  | Giovanna [10%] |
| 95 | 1.6.6 | Supervisão do documento | 65d | 2025-03-24 | 2025-06-20 | 80SS, 81FF, 82FF, 83FF, 85FF, 86FF, 87FF, 88FF, 89FF, 90FF, 91FF, 92FF, 94FF |  |  | Giovanna [10%] |
| 96 | 1.6.7 | Entrega da Documentação Final | 0d | 2025-06-24 | 2025-06-24 | 95, 97 |  | must finish on 2025-06-24 |  |
| 97 | 1.6.8 | Preenchimento da 4ª tabela de autoavaliação | 15d | 2025-06-03 | 2025-06-23 |  |  | as late as possible | Alyson [16.67%]; Bruno [16.67%]; Eliel [16.67%]; Henrique [16.67%]; Henrriky [16.67%]; Giovanna [16.67%] |
